# VAIESOFT

Schedule from MS Project, 2021-04-08 to 2021-06-02, 7 hours a day.

## Calendars

- VAIESOFT1: Mon-Sun 16:00-20:00, 20:01-23:00. Exceptions (off unless hours are given): 2021-05-01 (FESTIVO), 2021-05-17 (FESTIVO).

## Resources

| Resource | Group |
| --- | --- |
| Analista | OPERATIVO |
| Desarrollador back 1 | OPERATIVO |
| Desarrollador back 2 | OPERATIVO |
| Desarrollador back 3 | OPERATIVO |
| Desarrollador front 1 | OPERATIVO |
| Desarrollador front 2 | OPERATIVO |
| Desarrollador front 3 | OPERATIVO |
| Administrador Base de Datos | OPERATIVO |
| Especificador de requisitos | OPERATIVO |
| Tester | OPERATIVO |
| Capacitor | OPERATIVO |
| Director de proyecto | ADMINISTRADOR |
| Documentador | OPERATIVO |
| Arquitecto | OPERATIVO |

## Schedule

| ID | WBS | Task | Type | Duration | Start | Finish | Predecessors | Total slack | Free slack | Constraint | Resources | Work |
| --- | --- | --- | --- | --- | --- | --- | --- | --- | --- | --- | --- | --- |
| 2 | 1 | **Aplicativo web VAIESOFT** |  | 53.52d | 2021-04-08 17:00 | 2021-06-02 21:34 |  | 0d |  |  |  | 1544.9h |
| 3 | 1.1 | **1.1 E1: Aplicativo web para la gestión de planes de accion e informes de accion de unidades investigativas UFPS** |  | 46.12d | 2021-04-08 17:00 | 2021-05-26 18:38 |  | 5.35d |  |  |  | 1306.3h |
| 4 | 1.1.1 | **1.1.1 Analisis** |  | 16.82d | 2021-04-08 17:00 | 2021-04-25 16:00 |  | 5.35d |  |  |  | 109.7h |
| 5 | 1.1.1.1 | Realizar entrevista no estructurada con el cliente 1 |  | 2h | 2021-04-08 17:00 | 2021-04-08 19:00 |  | 5.35d | 0d |  | Director de proyecto [25%] | 0.5h |
| 6 | 1.1.1.2 | Analizar la información recolectada |  | 3.8h | 2021-04-08 19:00 | 2021-04-08 22:49 | 5 | 5.35d | 0d |  | Analista [50%] | 1.9h |
| 7 | 1.1.1.3 | Realizar entrevista no estructurada con el cliente 2 |  | 2h | 2021-04-10 16:00 | 2021-04-10 18:00 | 6 | 4.33d | 0d | start no earlier than 2021-04-10 16:00 | Director de proyecto; Analista | 4h |
| 8 | 1.1.1.4 | Analizar la información recolectada |  | 3.8h | 2021-04-10 18:00 | 2021-04-10 21:49 | 7 | 4.33d | 0d |  | Director de proyecto; Analista | 7.6h |
| 9 | 1.1.1.5 | Realizar entrevista no estructurada con el cliente 3 |  | 2h | 2021-04-12 16:00 | 2021-04-12 18:00 | 8 | 3.16d | 0d | start no earlier than 2021-04-12 16:00 | Director de proyecto | 2h |
| 10 | 1.1.1.6 | Analizar la información recolectada |  | 3.8h | 2021-04-12 18:00 | 2021-04-12 21:49 | 9 | 3.16d |  |  | Analista [50%] | 1.9h |
| 11 | 1.1.1.7 | Realizar entrevista no estructurada con el cliente 4 |  | 2h | 2021-04-16 16:00 | 2021-04-16 18:00 | 10 | 0d |  | start no earlier than 2021-04-16 16:00 | Director de proyecto | 2h |
| 12 | 1.1.1.8 | Analizar la información recolectada |  | 3.8h | 2021-04-16 18:00 | 2021-04-16 21:49 | 11 | 0d |  |  | Analista | 3.8h |
| 13 | 1.1.1.9 | Elaborar el documento Charter |  | 12d | 2021-04-08 22:49 | 2021-04-21 16:01 | 6 | 37.04d | 0d |  | Documentador | 84h |
| 14 | 1.1.1.10 | Socializacion documento Charter |  | 1h | 2021-04-21 16:01 | 2021-04-21 17:01 | 13 | 40.55d | 3.85d |  | Analista; Director de proyecto | 2h |
| 15 | 1.1.1.11 | Entrega documento Charter | milestone | 0h | 2021-04-25 16:00 | 2021-04-25 16:00 | 14 | 36.71d |  | start no earlier than 2021-04-25 16:00 | Director de proyecto |  |
| 16 | 1.1.2 | **1.1.2 Planificación** |  | 20.69d | 2021-04-10 21:49 | 2021-05-02 19:57 |  | 5.99d |  |  |  | 212.8h |
| 17 | 1.1.2.1 | Reunion de equipo de trabajo para definicion de herramientas computacionales para el desarrollo del proyecto |  | 6.6h | 2021-04-16 21:49 | 2021-04-17 21:26 | 12 | 0d |  |  | Administrador Base de Datos; Analista; Desarrollador back 1; Desarrollador back 2; Desarrollador back 3; Desarrollador front 1; Desarrollador front 2; Desarrollador front 3; Especificador de requisitos; Tester | 66h |
| 18 | 1.1.2.2 | Definición de historias de usuario |  | 5d | 2021-04-10 21:49 | 2021-04-15 21:54 | 8 | 29.19d | 0d |  | Analista | 35h |
| 19 | 1.1.2.3 | Definición de iteraciones |  | 1d | 2021-04-15 21:54 | 2021-04-16 21:55 | 18 | 29.19d | 0d |  | Analista | 7h |
| 20 | 1.1.2.4 | Elaborar el documento Plan de Gestion de Alcance |  | 13.4d | 2021-04-16 21:55 | 2021-04-30 17:56 | 13SS, 19 | 29.19d | 0d |  | Documentador | 93.8h |
| 21 | 1.1.2.5 | Socializacion Plan de Gestion de Alcance |  | 2h | 2021-04-30 17:56 | 2021-04-30 19:56 | 20 | 29.19d | 0d |  | Analista; Director de proyecto | 4h |
| 22 | 1.1.2.6 | Refinamiento Plan de Gestion Alcance |  | 1d | 2021-04-30 19:56 | 2021-05-02 19:57 | 21 | 29.19d | 0d |  | Documentador | 7h |
| 23 | 1.1.2.7 | Entrega documento Plan de Gestion de Alcance | milestone | 0d | 2021-05-02 19:57 | 2021-05-02 19:57 | 22 | 29.19d | 0d |  | Director de proyecto |  |
| 24 | 1.1.3 | **1.1.3 Iteración 1: HU01, HU02, HU3, HU06, HU07, HU12, HU13** |  | 10.73d | 2021-04-21 21:30 | 2021-05-03 19:46 |  | 0d |  |  |  | 320.6h |
| 25 | 1.1.3.1 | **1.1.3.1 Planificación** |  | 0.97d | 2021-05-02 19:57 | 2021-05-03 19:46 |  | 29.19d |  |  |  | 19.6h |
| 26 | 1.1.3.1.1 | Refinar las historias de usuario |  | 1h | 2021-05-02 19:57 | 2021-05-02 20:58 | 23 | 29.19d | 0d |  | Analista | 1h |
| 27 | 1.1.3.1.2 | Analisis de requerimientos |  | 2h | 2021-05-02 20:58 | 2021-05-02 22:58 | 26 | 29.19d | 0d |  | Analista; Especificador de requisitos | 4h |
| 28 | 1.1.3.1.3 | Definicion de requerimientos funcionales |  | 2h | 2021-05-02 20:58 | 2021-05-02 22:58 | 27FF | 29.73d |  |  | Analista; Especificador de requisitos | 4h |
| 29 | 1.1.3.1.4 | Definicion de requerimientos no funcionales |  | 2h | 2021-05-02 20:58 | 2021-05-02 22:58 | 27FF | 29.19d | 0d |  | Analista; Especificador de requisitos | 4h |
| 30 | 1.1.3.1.5 | Elaborar el Plan de Iteraciones |  | 1.8h | 2021-05-02 22:58 | 2021-05-03 17:46 | 29 | 29.19d | 0d |  | Analista; Documentador | 3.6h |
| 31 | 1.1.3.1.6 | Socializacion del Plan de Iteraciones |  | 1h | 2021-05-03 17:46 | 2021-05-03 18:46 | 30 | 29.19d | 0d |  | Analista; Director de proyecto | 2h |
| 32 | 1.1.3.1.7 | Refinamiento Plan de Iteraciones |  | 1h | 2021-05-03 18:46 | 2021-05-03 19:46 | 31 | 29.19d | 0d |  | Analista [50%]; Documentador [50%] | 1h |
| 33 | 1.1.3.1.8 | Entrega documento Plan de Iteraciones | milestone | 0d | 2021-05-03 19:46 | 2021-05-03 19:46 | 32 | 29.19d |  |  | Director de proyecto |  |

| ID | WBS | Task | Type | Duration | Start | Finish | Predecessors | Total slack | Free slack | Resources | Work |
| --- | --- | --- | --- | --- | --- | --- | --- | --- | --- | --- | --- |
| 34 | 1.1.3.2 | **1.1.3.2 Diseño** |  | 1.43d | 2021-04-21 21:30 | 2021-04-23 17:31 |  | 0d |  |  | 38h |
| 35 | 1.1.3.2.1 | Realizar Wirefrimes de la iteracion |  | 3h | 2021-04-21 21:30 | 2021-04-22 17:30 | 17FS+4d | 0d |  | Desarrollador front 1; Desarrollador front 2; Desarrollador front 3 | 9h |
| 36 | 1.1.3.2.2 | Socializar los wireframes |  | 1h | 2021-04-22 17:30 | 2021-04-22 18:30 | 35 | 38.63d | 0d | Desarrollador front 1; Desarrollador front 2; Desarrollador front 3; Director de proyecto | 4h |
| 37 | 1.1.3.2.3 | Refinamiento de los wireframes |  | 1h | 2021-04-22 18:30 | 2021-04-22 19:30 | 36 | 38.63d | 0.14d | Desarrollador front 1; Desarrollador front 2; Desarrollador front 3; Director de proyecto | 4h |
| 38 | 1.1.3.2.4 | Diseñar la arquitectura del aplicativo |  | 3h | 2021-04-21 21:30 | 2021-04-22 17:30 | 35SS | 0d |  | Arquitecto | 3h |
| 39 | 1.1.3.2.5 | Diseñar modelo de datos |  | 3h | 2021-04-21 21:30 | 2021-04-22 17:30 | 38SS | 0d |  | Administrador Base de Datos | 3h |
| 40 | 1.1.3.2.6 | Socializar el modelo de datos y la arquitectura con el equipo de trabajo |  | 1h | 2021-04-22 17:30 | 2021-04-22 18:30 | 39, 38 | 0d |  | Administrador Base de Datos; Arquitecto; Director de proyecto | 3h |
| 41 | 1.1.3.2.7 | Refinamiento del modelo de datos y arquitectura |  | 2h | 2021-04-22 18:30 | 2021-04-22 20:31 | 40 | 0d |  | Administrador Base de Datos; Arquitecto | 4h |
| 42 | 1.1.3.2.8 | Elaborar documentación de diseño |  | 2h | 2021-04-22 20:31 | 2021-04-22 22:31 | 41, 37 | 38.49d | 0d | Documentador | 2h |
| 43 | 1.1.3.2.9 | Socializar la documentacion de diseño |  | 1h | 2021-04-22 22:31 | 2021-04-23 16:31 | 42 | 38.49d | 0d | Analista; Arquitecto; Director de proyecto | 3h |
| 44 | 1.1.3.2.10 | Refinamiento de la documentacion de diseño |  | 1h | 2021-04-23 16:31 | 2021-04-23 17:31 | 43 | 38.49d | 0d | Analista; Arquitecto; Documentador | 3h |
| 45 | 1.1.3.2.11 | Entrega del documento de diseño | milestone | 0d | 2021-04-23 17:31 | 2021-04-23 17:31 | 44 | 38.49d |  | Director de proyecto |  |
| 46 | 1.1.3.3 | **1.1.3.3 Codificación** |  | 6.86d | 2021-04-23 20:32 | 2021-04-30 19:38 |  | 0d |  |  | 239h |
| 47 | 1.1.3.3.1 | Crear la base de datos |  | 4h | 2021-04-23 20:32 | 2021-04-24 17:32 | 41FS+1d | 0d |  | Administrador Base de Datos | 4h |
| 48 | 1.1.3.3.2 | Elaborar de documento de base de datos |  | 2h | 2021-04-24 17:32 | 2021-04-24 19:32 | 47 | 0d |  | Administrador Base de Datos; Documentador | 4h |
| 49 | 1.1.3.3.3 | Desarrollar las historias de usuario HU01,HU02 |  | 4d | 2021-04-25 19:33 | 2021-04-29 19:37 | 48FS+1d | 0d |  | Desarrollador back 1 [50%]; Desarrollador front 2 [50%]; Desarrollador back 2 [50%]; Desarrollador front 3 [50%] | 56h |
| 50 | 1.1.3.3.4 | Desarrollar las historias de usuario HU03 |  | 5d | 2021-04-25 19:33 | 2021-04-30 19:38 | 49SS | 0d |  | Desarrollador back 1 [50%]; Desarrollador front 3 [50%] | 35h |
| 51 | 1.1.3.3.5 | Desarrollar las historias de usuario HU06, HU07 |  | 5d | 2021-04-25 19:33 | 2021-04-30 19:38 | 50SS | 0d |  | Desarrollador back 3; Desarrollador front 1 | 70h |
| 52 | 1.1.3.3.6 | Desarrollar las historias de usuario HU12, HU13 |  | 5d | 2021-04-25 19:33 | 2021-04-30 19:38 | 51SS | 0d |  | Desarrollador back 2; Desarrollador front 2 | 70h |
| 53 | 1.1.3.4 | **1.1.3.4 Pruebas** |  | 1.71d | 2021-04-30 19:38 | 2021-05-03 17:40 |  | 0d |  |  | 24h |
| 54 | 1.1.3.4.1 | Diseñar los casos de prueba |  | 4h | 2021-04-30 19:38 | 2021-05-02 16:39 | 49, 50, 51, 52 | 0d |  | Tester | 4h |
| 55 | 1.1.3.4.2 | Ejecutar pruebas unitarias |  | 2h | 2021-05-02 16:39 | 2021-05-02 18:39 | 54 | 0d |  | Tester | 2h |
| 56 | 1.1.3.4.3 | Elaborar documentación con los resultados obtenidos del plan de pruebas |  | 4h | 2021-05-02 18:39 | 2021-05-02 22:40 | 55 | 0d |  | Documentador [50%]; Tester | 6h |
| 57 | 1.1.3.4.4 | Corregir las fallas encontradas en las pruebas |  | 2h | 2021-05-02 22:40 | 2021-05-03 17:40 | 56 | 0d |  | Desarrollador back 1; Desarrollador back 2; Desarrollador back 3; Desarrollador front 1; Desarrollador front 2; Desarrollador front 3 | 12h |
| 58 | 1.1.3.4.5 | Entrega de documentación y código fuente, correspondiente a la iteración 1 | milestone | 0d | 2021-05-03 17:40 | 2021-05-03 17:40 | 57 | 0d |  | Director de proyecto |  |

| ID | WBS | Task | Type | Duration | Start | Finish | Predecessors | Total slack | Free slack | Resources | Work |
| --- | --- | --- | --- | --- | --- | --- | --- | --- | --- | --- | --- |
| 59 | 1.1.4 | **1.1.4 Iteración 2: HU04, HU08, HU09, HU14, HU15** |  | 9.26d | 2021-05-03 17:40 | 2021-05-12 19:37 |  | 0d |  |  | 297.6h |
| 60 | 1.1.4.1 | **1.1.4.1 Planificación** |  | 0.97d | 2021-05-03 17:40 | 2021-05-04 17:29 |  | 0d |  |  | 20.6h |
| 61 | 1.1.4.1.1 | Refinar las historias de usuario |  | 1h | 2021-05-03 17:40 | 2021-05-03 18:40 | 58 | 0d |  | Analista | 1h |
| 62 | 1.1.4.1.2 | Analisis de requerimientos |  | 2h | 2021-05-03 18:40 | 2021-05-03 20:41 | 61 | 0d |  | Analista; Especificador de requisitos | 4h |
| 63 | 1.1.4.1.3 | Definicion de requerimientos funcionales |  | 2h | 2021-05-03 18:40 | 2021-05-03 20:41 | 62FF | 29.06d |  | Analista; Especificador de requisitos | 4h |
| 64 | 1.1.4.1.4 | Definicion de requerimientos no funcionales |  | 2h | 2021-05-03 18:40 | 2021-05-03 20:41 | 62FF | 0d |  | Analista; Especificador de requisitos | 4h |
| 65 | 1.1.4.1.5 | Elaborar el Plan de Iteraciones |  | 1.8h | 2021-05-03 20:41 | 2021-05-03 22:29 | 64 | 0d |  | Analista; Documentador | 3.6h |
| 66 | 1.1.4.1.6 | Socializacion del Plan de Iteraciones |  | 1h | 2021-05-03 22:29 | 2021-05-04 16:29 | 65 | 0d |  | Analista; Director de proyecto | 2h |
| 67 | 1.1.4.1.7 | Refinamiento Plan de Iteraciones |  | 1h | 2021-05-04 16:29 | 2021-05-04 17:29 | 66 | 0d |  | Analista; Documentador | 2h |
| 68 | 1.1.4.1.8 | Entrega documento Plan de Iteraciones | milestone | 0d | 2021-05-04 17:29 | 2021-05-04 17:29 | 67 | 0d |  | Director de proyecto |  |
| 69 | 1.1.4.2 | **1.1.4.2 Diseño** |  | 2.29d | 2021-05-04 17:29 | 2021-05-06 19:31 |  | 0d |  |  | 31h |
| 70 | 1.1.4.2.1 | Realizar Wirefrimes de la iteracion |  | 3h | 2021-05-04 17:29 | 2021-05-04 20:30 | 68 | 0d |  | Desarrollador front 1; Desarrollador front 2; Desarrollador front 3 | 9h |
| 71 | 1.1.4.2.2 | Socializar los wireframes |  | 1h | 2021-05-05 20:31 | 2021-05-05 21:31 | 70FS+1d | 26.23d | 0d | Desarrollador front 1; Desarrollador front 2; Desarrollador front 3; Director de proyecto | 4h |
| 72 | 1.1.4.2.3 | Refinamiento de los wireframes |  | 1h | 2021-05-05 21:31 | 2021-05-05 22:31 | 71 | 26.23d | 0d | Desarrollador front 1; Desarrollador front 2; Desarrollador front 3; Director de proyecto | 4h |
| 73 | 1.1.4.2.4 | Retroalimentar modelo de datos |  | 3h | 2021-05-04 17:29 | 2021-05-04 20:30 | 70SS | 0d |  | Administrador Base de Datos | 3h |
| 74 | 1.1.4.2.5 | Socializar el modelo de datos con el equipo de trabajo |  | 1h | 2021-05-04 20:30 | 2021-05-04 21:30 | 73 | 0d |  | Administrador Base de Datos; Director de proyecto | 2h |
| 75 | 1.1.4.2.6 | Refinamiento del modelo de datos |  | 1h | 2021-05-04 21:30 | 2021-05-04 22:30 | 74 | 0d |  | Administrador Base de Datos | 1h |
| 76 | 1.1.4.2.7 | Complementar la documentación de diseño |  | 2h | 2021-05-05 22:31 | 2021-05-06 17:31 | 75, 72 | 26.23d | 0d | Documentador | 2h |
| 77 | 1.1.4.2.8 | Socializar la documentacion de diseño |  | 1h | 2021-05-06 17:31 | 2021-05-06 18:31 | 76 | 26.23d | 0d | Analista; Arquitecto; Director de proyecto | 3h |
| 78 | 1.1.4.2.9 | Refinamiento de la documentacion de diseño |  | 1h | 2021-05-06 18:31 | 2021-05-06 19:31 | 77 | 26.23d | 0d | Documentador; Analista; Arquitecto | 3h |
| 79 | 1.1.4.2.10 | Entrega del documento de diseño | milestone | 0d | 2021-05-06 19:31 | 2021-05-06 19:31 | 78 | 26.23d |  | Director de proyecto |  |
| 80 | 1.1.4.3 | **1.1.4.3 Codificación** |  | 5.86d | 2021-05-04 22:30 | 2021-05-10 21:36 |  | 0d |  |  | 218h |
| 81 | 1.1.4.3.1 | Complementar la base de datos |  | 4h | 2021-05-04 22:30 | 2021-05-05 19:30 | 75 | 0d |  | Administrador Base de Datos | 4h |
| 82 | 1.1.4.3.2 | Elaborar de documento de base de datos |  | 2h | 2021-05-05 19:30 | 2021-05-05 21:31 | 81 | 0d |  | Administrador Base de Datos; Documentador | 4h |
| 83 | 1.1.4.3.3 | Desarrollar las historias de usuario HU04 |  | 5d | 2021-05-05 21:31 | 2021-05-10 21:36 | 82 | 0d |  | Desarrollador back 1; Desarrollador front 3 | 70h |
| 84 | 1.1.4.3.4 | Desarrollar las historias de usuario HU08,HU09 |  | 5d | 2021-05-05 21:31 | 2021-05-10 21:36 | 83SS | 0d |  | Desarrollador back 3; Desarrollador front 1 | 70h |
| 85 | 1.1.4.3.5 | Desarrollar las historias de usuario HU14, HU15 |  | 5d | 2021-05-05 21:31 | 2021-05-10 21:36 | 84SS | 0d |  | Desarrollador front 2; Desarrollador back 2 | 70h |

| ID | WBS | Task | Type | Duration | Start | Finish | Predecessors | Total slack | Free slack | Resources | Work |
| --- | --- | --- | --- | --- | --- | --- | --- | --- | --- | --- | --- |
| 86 | 1.1.4.4 | **1.1.4.4 Pruebas** |  | 1.71d | 2021-05-10 21:36 | 2021-05-12 19:37 |  | 0d |  |  | 28h |
| 87 | 1.1.4.4.1 | Diseñar los casos de prueba |  | 4h | 2021-05-10 21:36 | 2021-05-11 18:36 | 85, 83, 84 | 0d |  | Tester | 4h |
| 88 | 1.1.4.4.2 | Ejecutar pruebas unitarias |  | 2h | 2021-05-11 18:36 | 2021-05-11 20:37 | 87 | 0d |  | Tester | 2h |
| 89 | 1.1.4.4.3 | Elaborar documentación con los resultados obtenidos del plan de pruebas |  | 4h | 2021-05-11 20:37 | 2021-05-12 17:37 | 88 | 0d |  | Documentador; Tester | 8h |
| 90 | 1.1.4.4.4 | Corregir las fallas encontradas en las pruebas |  | 2h | 2021-05-12 17:37 | 2021-05-12 19:37 | 89 | 0d |  | Desarrollador back 1; Desarrollador back 2; Desarrollador back 3; Desarrollador front 1; Desarrollador front 2; Desarrollador front 3; Director de proyecto | 14h |
| 91 | 1.1.4.4.5 | Entrega de documentación y código fuente, correspondiente a la iteración 2 | milestone | 0d | 2021-05-12 19:37 | 2021-05-12 19:37 | 90 | 0d |  | Director de proyecto |  |
| 92 | 1.1.5 | **1.1.5 Iteración 3: HU05, HU10, HU11, HU16, HU17** |  | 12.83d | 2021-05-12 19:37 | 2021-05-26 18:38 |  | 0d |  |  | 365.6h |
| 93 | 1.1.5.1 | **1.1.5.1 Planificación** |  | 0.97d | 2021-05-12 19:37 | 2021-05-13 19:26 |  | 0d |  |  | 20.6h |
| 94 | 1.1.5.1.1 | Refinar las historias de usuario |  | 1h | 2021-05-12 19:37 | 2021-05-12 20:38 | 91 | 0d |  | Analista | 1h |
| 95 | 1.1.5.1.2 | Analisis de requerimientos |  | 2h | 2021-05-12 20:38 | 2021-05-12 22:38 | 94 | 0d |  | Analista; Especificador de requisitos | 4h |
| 96 | 1.1.5.1.3 | Definicion de requerimientos funcionales |  | 2h | 2021-05-12 20:38 | 2021-05-12 22:38 | 95FF | 19.8d |  | Analista; Especificador de requisitos | 4h |
| 97 | 1.1.5.1.4 | Definicion de requerimientos no funcionales |  | 2h | 2021-05-12 20:38 | 2021-05-12 22:38 | 95FF | 0d |  | Analista; Especificador de requisitos | 4h |
| 98 | 1.1.5.1.5 | Elaborar el Plan de Iteraciones |  | 1.8h | 2021-05-12 22:38 | 2021-05-13 17:26 | 97 | 0d |  | Analista; Documentador | 3.6h |
| 99 | 1.1.5.1.6 | Socializacion del Plan de Iteraciones |  | 1h | 2021-05-13 17:26 | 2021-05-13 18:26 | 98 | 0d |  | Analista; Director de proyecto | 2h |
| 100 | 1.1.5.1.7 | Refinamiento Plan de Iteraciones |  | 1h | 2021-05-13 18:26 | 2021-05-13 19:26 | 99 | 0d |  | Analista; Documentador | 2h |
| 101 | 1.1.5.1.8 | Entrega documento Plan de Iteraciones | milestone | 0d | 2021-05-13 19:26 | 2021-05-13 19:26 | 100 | 0d |  | Director de proyecto |  |
| 102 | 1.1.5.2 | **1.1.5.2 Diseño** |  | 2.29d | 2021-05-13 19:26 | 2021-05-15 21:29 |  | 0d |  |  | 31h |
| 103 | 1.1.5.2.1 | Realizar Wirefrimes de la iteracion |  | 3h | 2021-05-13 19:26 | 2021-05-13 22:27 | 101 | 0d |  | Desarrollador front 1; Desarrollador front 2; Desarrollador front 3 | 9h |
| 104 | 1.1.5.2.2 | Socializar los wireframes |  | 1h | 2021-05-14 22:28 | 2021-05-15 16:28 | 103FS+1d | 0d |  | Desarrollador front 1; Desarrollador front 2; Desarrollador front 3; Director de proyecto | 4h |
| 105 | 1.1.5.2.3 | Refinamiento de los wireframes |  | 1h | 2021-05-15 16:28 | 2021-05-15 17:28 | 104 | 0d |  | Desarrollador front 1; Desarrollador front 2; Desarrollador front 3; Director de proyecto | 4h |
| 106 | 1.1.5.2.4 | Retroalimentar modelo de datos |  | 3h | 2021-05-13 19:26 | 2021-05-13 22:27 | 103SS | 1d | 0d | Administrador Base de Datos | 3h |
| 107 | 1.1.5.2.5 | Socializar el modelo de datos con el equipo de trabajo |  | 1h | 2021-05-13 22:27 | 2021-05-14 16:27 | 106 | 1d | 0d | Administrador Base de Datos; Director de proyecto | 2h |
| 108 | 1.1.5.2.6 | Refinamiento del modelo de datos |  | 1h | 2021-05-14 16:27 | 2021-05-14 17:27 | 107 | 1d |  | Administrador Base de Datos | 1h |
| 109 | 1.1.5.2.7 | Complementar la documentación de diseño |  | 2h | 2021-05-15 17:28 | 2021-05-15 19:28 | 108, 105 | 0d |  | Documentador | 2h |
| 110 | 1.1.5.2.8 | Socializar la documentacion de diseño |  | 1h | 2021-05-15 19:28 | 2021-05-15 20:29 | 109 | 0d |  | Analista; Arquitecto; Director de proyecto | 3h |
| 111 | 1.1.5.2.9 | Refinamiento de la documentacion de diseño |  | 1h | 2021-05-15 20:29 | 2021-05-15 21:29 | 110 | 0d |  | Documentador; Analista; Arquitecto | 3h |
| 112 | 1.1.5.2.10 | Entrega del documento de diseño | milestone | 0d | 2021-05-15 21:29 | 2021-05-15 21:29 | 111 | 0d |  |  |  |

| ID | WBS | Task | Type | Duration | Start | Finish | Predecessors | Total slack | Free slack | Resources | Work |
| --- | --- | --- | --- | --- | --- | --- | --- | --- | --- | --- | --- |
| 113 | 1.1.5.3 | **1.1.5.3 Codificación** |  | 7.86d | 2021-05-15 21:29 | 2021-05-24 20:37 |  | 0d |  |  | 302h |
| 114 | 1.1.5.3.1 | Complementar la base de datos |  | 4h | 2021-05-15 21:29 | 2021-05-16 18:29 | 112 | 0d |  | Administrador Base de Datos | 4h |
| 115 | 1.1.5.3.2 | Elaborar de documento de base de datos |  | 2h | 2021-05-16 18:29 | 2021-05-16 20:30 | 114 | 0d |  | Administrador Base de Datos; Documentador | 4h |
| 116 | 1.1.5.3.3 | Desarrollar las historias de usuario HU05 |  | 5d | 2021-05-16 20:30 | 2021-05-22 20:35 | 115 | 0d |  | Desarrollador back 1; Desarrollador front 3 | 70h |
| 117 | 1.1.5.3.4 | Desarrollar las historias de usuario HU10,HU11 |  | 5d | 2021-05-16 20:30 | 2021-05-22 20:35 | 116SS | 0d |  | Desarrollador back 3; Desarrollador front 1 | 70h |
| 118 | 1.1.5.3.5 | Desarrollar las historias de usuario HU16, HU17 |  | 5d | 2021-05-16 20:30 | 2021-05-22 20:35 | 117SS | 0d |  | Desarrollador back 2; Desarrollador front 2 | 70h |
| 119 | 1.1.5.3.6 | Integrar los componentes del desarrollo |  | 2d | 2021-05-22 20:35 | 2021-05-24 20:37 | 118, 116, 117 | 0d |  | Desarrollador back 1; Desarrollador back 2; Desarrollador back 3; Desarrollador front 1; Desarrollador front 2; Desarrollador front 3 | 84h |
| 120 | 1.1.5.4 | **1.1.5.4 Pruebas** |  | 1.71d | 2021-05-24 20:37 | 2021-05-26 18:38 |  | 0d |  |  | 12h |
| 121 | 1.1.5.4.1 | Diseñar los casos de prueba |  | 4h | 2021-05-24 20:37 | 2021-05-25 17:37 | 119 | 0d |  | Tester | 4h |
| 122 | 1.1.5.4.2 | Ejecutar pruebas unitarias |  | 4h | 2021-05-25 17:37 | 2021-05-25 21:38 | 121 | 0d |  | Tester | 4h |
| 123 | 1.1.5.4.3 | Elaborar documentación con los resultados obtenidos del plan de pruebas |  | 2h | 2021-05-25 21:38 | 2021-05-26 16:38 | 122 | 0d |  | Documentador; Tester | 4h |
| 124 | 1.1.5.4.4 | Corregir las fallas encontradas en las pruebas |  | 2h | 2021-05-26 16:38 | 2021-05-26 18:38 | 123 | 0d |  |  |  |
| 125 | 1.1.5.4.5 | Entrega de documentación y código fuente, correspondiente a la iteración 3 | milestone | 0d | 2021-05-26 18:38 | 2021-05-26 18:38 | 124 | 0d |  | Director de proyecto |  |
| 126 | 1.2 | **1.2 E2: Despliegue del aplicativo web VAIESOFT** |  | 5.11d | 2021-05-26 18:38 | 2021-05-31 19:31 |  | 0d |  |  | 169.6h |
| 127 | 1.2.1 | **1.2.1 Preparación** |  | 2.43d | 2021-05-26 18:38 | 2021-05-28 21:41 |  | 0d |  |  | 58h |
| 128 | 1.2.1.1 | Analizar necesidades del servidor |  | 3h | 2021-05-26 18:38 | 2021-05-26 21:39 | 125 | 0d |  | Analista; Arquitecto | 6h |
| 129 | 1.2.1.2 | Analizar de requisitos de infraestructura |  | 3h | 2021-05-26 21:39 | 2021-05-27 17:39 | 128 | 0d |  | Analista; Arquitecto | 6h |
| 130 | 1.2.1.3 | Configurar servidor |  | 1d | 2021-05-27 17:39 | 2021-05-28 17:40 | 129 | 0d |  | Desarrollador back 1; Desarrollador back 2; Desarrollador back 3; Desarrollador front 1; Desarrollador front 2; Desarrollador front 3 | 42h |
| 131 | 1.2.1.4 | Elaborar Plan de configuración del servidor |  | 4h | 2021-05-28 17:40 | 2021-05-28 21:41 | 130 | 0d |  | Documentador | 4h |
| 132 | 1.2.1.5 | Entrega Plan configuración del servidor | milestone | 0d | 2021-05-28 21:41 | 2021-05-28 21:41 | 131 | 0d |  | Director de proyecto |  |
| 133 | 1.2.2 | **1.2.2 Despliegue** |  | 4.69d | 2021-05-26 21:39 | 2021-05-31 19:31 |  | 0.57d |  |  | 111.6h |
| 134 | 1.2.2.1 | Registrar nombre del dominio |  | 4h | 2021-05-28 21:41 | 2021-05-29 18:41 | 132 | 4.4d |  | Desarrollador back 1; Desarrollador back 2; Desarrollador front 2; Desarrollador front 3 | 16h |
| 135 | 1.2.2.2 | Instalación aplicación web en servidor |  | 4h | 2021-05-28 21:41 | 2021-05-29 18:41 | 132 | 0d |  | Desarrollador back 3; Desarrollador front 1 | 8h |
| 136 | 1.2.2.3 | Cargar de información base de datos |  | 7h | 2021-05-29 18:41 | 2021-05-30 18:42 | 135 | 0d |  | Administrador Base de Datos | 7h |
| 137 | 1.2.2.4 | Realización de pruebas al servidor |  | 4h | 2021-05-30 18:42 | 2021-05-30 22:43 | 136 | 0d |  | Tester | 4h |
| 138 | 1.2.2.5 | Elaborar informe de pruebas |  | 2h | 2021-05-30 22:43 | 2021-05-31 17:43 | 137 | 0d |  | Documentador; Tester | 4h |
| 139 | 1.2.2.6 | Elaborar el manual de usuaio |  | 2d | 2021-05-26 21:39 | 2021-05-28 21:41 | 128 | 0.57d | 0d | Desarrollador front 1; Desarrollador front 2; Desarrollador front 3; Documentador | 56h |
| 140 | 1.2.2.7 | Socializar el manual de usuario |  | 1.8h | 2021-05-28 21:41 | 2021-05-29 16:29 | 139 | 0.57d | 0d | Analista; Desarrollador front 1; Desarrollador front 2; Desarrollador front 3; Director de proyecto | 9h |
| 141 | 1.2.2.8 | Socializar el informe de pruebas |  | 1.8h | 2021-05-31 17:43 | 2021-05-31 19:31 | 138 | 0d |  | Director de proyecto; Tester | 3.6h |
| 142 | 1.2.2.9 | Refinar manual de usuario |  | 1h | 2021-05-29 16:29 | 2021-05-29 17:29 | 140 | 0.57d | 0d | Desarrollador front 1; Desarrollador front 2; Desarrollador front 3; Documentador | 4h |
| 143 | 1.2.2.10 | Entrega manual de usuario | milestone | 0d | 2021-05-29 17:29 | 2021-05-29 17:29 | 142 | 4.57d |  | Director de proyecto |  |
| 144 | 1.2.2.11 | Entrega informe de pruebas aplicación en servidor | milestone | 0d | 2021-05-31 19:31 | 2021-05-31 19:31 | 141 | 0d |  | Director de proyecto |  |

| ID | WBS | Task | Type | Duration | Start | Finish | Predecessors | Total slack | Free slack | Resources | Work |
| --- | --- | --- | --- | --- | --- | --- | --- | --- | --- | --- | --- |
| 145 | 1.3 | **1.3 E3: Capacitación** |  | 2.29d | 2021-05-31 19:31 | 2021-06-02 21:34 |  | 0d |  |  | 41h |
| 146 | 1.3.1 | **1.3.1 Planificación** |  | 1.71d | 2021-05-31 19:31 | 2021-06-02 17:33 |  | 0d |  |  | 37h |
| 147 | 1.3.1.1 | Definir la fecha para el desarrollo de la capacitación |  | 1h | 2021-05-31 19:31 | 2021-05-31 20:32 | 144 | 0d |  | Director de proyecto | 1h |
| 148 | 1.3.1.2 | Eaborar el programa de la capacitación |  | 6h | 2021-05-31 19:31 | 2021-06-01 18:32 | 147SS | 0d |  | Analista; Documentador; Capacitor | 18h |
| 149 | 1.3.1.3 | Elaborar la evaluación del contenido de la capacitación |  | 6h | 2021-06-01 18:32 | 2021-06-02 17:33 | 148 | 0d |  | Analista; Documentador; Capacitor | 18h |
| 150 | 1.3.2 | **1.3.2 Ejecución** |  | 0.57d | 2021-06-02 17:33 | 2021-06-02 21:34 |  | 0d |  |  | 4h |
| 151 | 1.3.2.1 | Ejecutar el programa de la capacitación |  | 2h | 2021-06-02 17:33 | 2021-06-02 19:33 | 149 | 0d |  | Capacitor | 2h |
| 152 | 1.3.2.2 | Ejecutar la evaluación del contenido de la capacitación |  | 2h | 2021-06-02 19:33 | 2021-06-02 21:34 | 151 | 0d |  | Capacitor | 2h |
| 153 | 1.3.2.3 | Entrega acta de aceptación de la capacitacion | milestone | 0d | 2021-06-02 21:34 | 2021-06-02 21:34 | 152 | 0d |  | Director de proyecto |  |
| 154 | 1.4 | **Cierre de proyecto** |  | 4d | 2021-05-29 17:29 | 2021-06-02 17:33 |  | 0.57d |  |  | 28h |
| 155 | 1.4.1 | Realizar documento de entrega final del proyecto |  | 3d | 2021-05-29 17:29 | 2021-06-01 17:32 | 142 | 0.57d | 0d | Documentador | 21h |
| 156 | 1.4.2 | Realizar documento de cesión de derechos |  | 1d | 2021-06-01 17:32 | 2021-06-02 17:33 | 155 | 0.57d | 0d | Director de proyecto | 7h |
| 157 | 1.4.3 | Entrega formal del proyecto y su documentación | milestone | 0d | 2021-06-02 17:33 | 2021-06-02 17:33 | 156 | 0.57d |  | Director de proyecto |  |
